# E-Clothify

How a schedule from MS Project changed from version to version. A marks actual dates.

## Version 1 (saved 2025-10-30)

| ID | WBS | Task | Duration | Start | Finish | Predecessors | Total float |
| --- | --- | --- | --- | --- | --- | --- | --- |
| 1 | 1 | **Proyecto** | 50d? | 2025-09-11 | 2025-11-20 |  | 0d |
| 2 | 1.1 | **Inicio y planificación** | 16d? | 2025-09-11 | 2025-10-02 |  | 0d |
| 3 | 1.1.1 | **Acta de constitución y alcance** | 6d | 2025-09-11 | 2025-09-18 |  |  |
| 4 |  | Redactar el Acta de Constitución | 1d | 2025-09-12 | 2025-09-12 |  |  |
| 5 |  | Revisar y aprobar el Acta | 1d | 2025-09-15 | 2025-09-15 | 4 |  |
| 6 |  | Fin H1 | 0d | 2025-09-11 | 2025-09-11 |  |  |
| 7 | 1.1.2 | **Plan de dirección del proyecto** | 6d? | 2025-09-18 | 2025-09-25 |  |  |
| 8 |  | Elaborar el Plan de Dirección | 1d | 2025-09-18 | 2025-09-18 |  |  |
| 9 |  | Aprobar el Plan de Dirección | 1d | 2025-09-22 | 2025-09-22 | 8 |  |
| 10 |  | Fin H2 | 0d | 2025-09-18 | 2025-09-18 |  |  |
| 11 | 1.1.3 | **Planes de gestión (alcance, requisitos, comunicaciones)** | 6d? | 2025-09-25 | 2025-10-02 |  |  |
| 12 |  | Definir el Plan de Gestión de Alcance | 1d | 2025-09-25 | 2025-09-25 |  |  |
| 13 |  | Definir el Plan de Gestión de Requisitos | 1d | 2025-09-26 | 2025-09-26 |  |  |
| 14 |  | Definir el Plan de Gestión de Comunicaciones | 1d | 2025-09-29 | 2025-09-29 |  |  |
| 15 |  | Aprobar los Planes de Gestión | 1d | 2025-09-30 | 2025-09-30 | 12, 13, 14 |  |
| 16 |  | Fin H3 | 0d | 2025-09-25 | 2025-09-25 |  |  |
| 17 | 1.1.4 | **Definición de arquitectura y entorno técnico** | 6d? | 2025-09-25 | 2025-10-02 |  |  |
| 18 |  | Analizar Configuración de entorno Django | 1d | 2025-10-01 | 2025-10-01 |  |  |
| 19 |  | Implementar Configuración de entorno Django | 1d | 2025-10-01 | 2025-10-01 |  |  |
| 20 |  | Validar Configuración de entorno Django | 1d | 2025-10-01 | 2025-10-01 |  |  |
| 21 |  | Validar Repositorio de código (src/) con CI/CD básico | 1d | 2025-10-01 | 2025-10-01 |  |  |
| 22 |  | Fin H4 | 0d | 2025-09-25 | 2025-09-25 |  |  |
| 23 | 1.2 | **Diseño y desarrollo funcional** | 20d? | 2025-10-02 | 2025-10-30 |  | 0d |
| 24 | 1.2.1 | **Catálogo de productos y fichas** | 6d? | 2025-10-02 | 2025-10-09 |  |  |
| 25 |  | CRUD fichas con tallas, colores y modelos | 2d | 2025-10-02 | 2025-10-03 |  |  |
| 26 |  | Configurar atributos de producto | 1d | 2025-10-06 | 2025-10-06 |  |  |
| 27 |  | Gestión de stock | 1d | 2025-10-07 | 2025-10-07 |  |  |
| 28 |  | Gestión de productos agotados | 1d | 2025-10-08 | 2025-10-08 |  |  |
| 29 |  | Fin H5 | 0d | 2025-10-02 | 2025-10-02 |  |  |
| 30 | 1.2.2 | **Carrito de compra y checkout** | 5d | 2025-10-09 | 2025-10-16 |  |  |
| 31 |  | CRUD fichas con tallas, colores y modelos | 2d | 2025-10-09 | 2025-10-10 |  |  |
| 32 |  | Configurar atributos de producto | 1d | 2025-10-13 | 2025-10-13 |  |  |
| 33 |  | Gestión de stock | 1d | 2025-10-14 | 2025-10-14 |  |  |
| 34 |  | Gestión de productos agotados | 1d | 2025-10-15 | 2025-10-15 |  |  |
| 35 |  | Fin H6 | 0d | 2025-10-09 | 2025-10-09 |  |  |
| 36 | 1.2.3 | **Métodos de pago e integración de pasarela** | 6d | 2025-10-16 | 2025-10-23 |  |  |
| 37 |  | CRUD fichas con tallas, colores y modelos | 2d | 2025-10-16 | 2025-10-17 |  |  |
| 38 |  | Configurar atributos de producto | 1d | 2025-10-20 | 2025-10-20 |  |  |
| 39 |  | Gestión de stock | 1d | 2025-10-21 | 2025-10-21 |  |  |
| 40 |  | Gestión de productos agotados | 1d | 2025-10-22 | 2025-10-22 |  |  |
| 41 |  | Fin H7 | 0d | 2025-10-16 | 2025-10-16 |  |  |
| 42 | 1.2.4 | **Gestión de pedidos** | 6d? | 2025-10-23 | 2025-10-30 |  |  |
| 43 |  | CRUD fichas con tallas, colores y modelos | 2d | 2025-10-23 | 2025-10-24 |  |  |
| 44 |  | Configurar atributos de producto | 1d | 2025-10-27 | 2025-10-27 |  |  |
| 45 |  | Gestión de stock | 1d | 2025-10-28 | 2025-10-28 |  |  |
| 46 |  | Gestión de productos agotados | 1d | 2025-10-29 | 2025-10-29 |  |  |
| 47 |  | Fin H8 | 0d | 2025-10-23 | 2025-10-23 |  |  |
| 48 | 1.3 | **Integración, pruebas y despliegue** | 16d? | 2025-10-30 | 2025-11-20 |  | 0d |
| 49 | 1.3.1 | **Integración de componentes** | 6d? | 2025-10-30 | 2025-11-06 |  |  |
| 50 |  | Definir el Plan de Gestión de Alcance | 1d | 2025-10-30 | 2025-10-30 |  |  |
| 51 |  | Definir el Plan de Gestión de Requisitos | 1d | 2025-10-31 | 2025-10-31 |  |  |
| 52 |  | Definir el Plan de Gestión de Comunicaciones | 1d | 2025-11-03 | 2025-11-03 |  |  |
| 53 |  | Aprobar los Planes de Gestión | 1d | 2025-11-04 | 2025-11-04 |  |  |
| 54 |  | Fin H9 | 0d | 2025-10-30 | 2025-10-30 |  |  |
| 55 | 1.3.2 | **Pruebas funcionales y de aceptación** | 6d? | 2025-10-30 | 2025-11-06 |  |  |
| 56 |  | Definir el Plan de Gestión de Alcance | 1d | 2025-10-30 | 2025-10-30 |  |  |
| 57 |  | Definir el Plan de Gestión de Requisitos | 1d | 2025-10-31 | 2025-10-31 |  |  |
| 58 |  | Definir el Plan de Gestión de Comunicaciones | 1d | 2025-11-03 | 2025-11-03 |  |  |
| 59 |  | Aprobar los Planes de Gestión | 1d | 2025-11-04 | 2025-11-04 |  |  |
| 60 |  | Fin H10 | 0d | 2025-10-30 | 2025-10-30 |  |  |
| 61 | 1.3.3 | **Despliegue en entorno PaaS** | 6d? | 2025-11-06 | 2025-11-13 |  |  |
| 62 |  | Definir el Plan de Gestión de Alcance | 1d | 2025-11-06 | 2025-11-06 |  |  |
| 63 |  | Definir el Plan de Gestión de Requisitos | 1d | 2025-11-07 | 2025-11-07 |  |  |
| 64 |  | Definir el Plan de Gestión de Comunicaciones | 1d | 2025-11-10 | 2025-11-10 |  |  |
| 65 |  | Aprobar los Planes de Gestión | 1d | 2025-11-11 | 2025-11-11 |  |  |
| 66 |  | Fin H11 | 0d | 2025-11-06 | 2025-11-06 |  |  |
| 67 | 1.3.4 | **Documentación técnica y manuales** | 6d? | 2025-11-13 | 2025-11-20 |  |  |
| 68 |  | Definir el Plan de Gestión de Alcance | 1d | 2025-11-13 | 2025-11-13 |  |  |
| 69 |  | Definir el Plan de Gestión de Requisitos | 1d | 2025-11-14 | 2025-11-14 |  |  |
| 70 |  | Definir el Plan de Gestión de Comunicaciones | 1d | 2025-11-17 | 2025-11-17 |  |  |

| ID | WBS | Task | Duration | Start | Finish |
| --- | --- | --- | --- | --- | --- |
| 71 |  | Aprobar los Planes de Gestión | 1d | 2025-11-18 | 2025-11-18 |
| 72 |  | Fin H12 | 0d | 2025-11-13 | 2025-11-13 |
| 73 | 1.4 | **Cierre** | 6d? | 2025-11-13 | 2025-11-20 |
| 74 | 1.4.1 | **Cierre del proyecto y lecciones aprendidas** | 6d? | 2025-11-13 | 2025-11-20 |
| 75 |  | Definir el Plan de Gestión de Alcance | 1d | 2025-11-13 | 2025-11-13 |
| 76 |  | Definir el Plan de Gestión de Requisitos | 1d | 2025-11-14 | 2025-11-14 |
| 77 |  | Definir el Plan de Gestión de Comunicaciones | 1d | 2025-11-17 | 2025-11-17 |
| 78 |  | Aprobar los Planes de Gestión | 1d | 2025-11-18 | 2025-11-18 |
| 79 |  | Fin H13 | 0d | 2025-11-13 | 2025-11-13 |

## Version 2 (saved 2025-10-30)

Last finish stays 2025-11-20.

Added:

| ID | Task | Duration | Start | Finish | Resources |
| --- | --- | --- | --- | --- | --- |
| 34 | Capturar datos del cliente y envío (RQ15) | 1d | 2025-10-15 | 2025-10-15 | Desarrollador full stack [50%]; Ingeniero DevOps [50%] |

Removed: 20 Validar Configuración de entorno Django; 53 Aprobar los Planes de Gestión; 59 Aprobar los Planes de Gestión; 65 Aprobar los Planes de Gestión; 71 Aprobar los Planes de Gestión

Changed:

| ID | Task | Start | Finish | Duration | Predecessors | Other |
| --- | --- | --- | --- | --- | --- | --- |
| 6 | Fin H1 - Acta aprobada por patrocinador | 2025-09-11 → 2025-09-15 (+4d) | 2025-09-11 → 2025-09-18 (+7d) | 0d → 4d |  | was named Fin H1 |
| 7 | **Plan de dirección del proyecto** |  |  |  | none → 6 |  |
| 10 | Fin H2 - Plan de dirección aprobado | 2025-09-18 → 2025-09-22 (+4d) | 2025-09-18 → 2025-09-25 (+7d) | 0d → 4d |  | was named Fin H2 |
| 11 | **Planes de gestión (alcance, requisitos, comunicaciones)** |  |  |  | none → 10 |  |
| 15 | Revisar y aprobar los planes |  |  |  |  | was named Aprobar los Planes de Gestión |
| 16 | Fin H3 - Planes de gestión aprobados |  |  | 0d → 1d |  | was named Fin H3 |
| 18 | Analizar arquitectura y componentes principales |  |  |  |  | was named Analizar Configuración de entorno Django |
| 19 | Configurar entorno Django y repositorio CI/CD |  |  |  |  | was named Implementar Configuración de entorno Django |
| 20 | Validar configuración y despliegue de entorno |  |  |  |  | was named Validar Repositorio de código (src/) con CI/CD básico |
| 21 | Fin H4 – Entorno técnico validado |  |  |  |  | was named Fin H4 |
| 24 | Diseñar estructura de catálogo y categorías (RQ3, RQ11) |  |  |  |  | was named CRUD fichas con tallas, colores y modelos |
| 25 | Implementar fichas de producto con atributos (RQ9, RQ10) |  |  |  |  | was named Configurar atributos de producto |
| 26 | Configurar buscador y filtrado (RQ12) |  |  |  |  | was named Gestión de stock |
| 27 | Publicar catálogo y realizar pruebas funcionales (RQ13) |  |  |  |  | was named Gestión de productos agotados |
| 28 | Fin H5 – Catálogo validado y publicado |  |  |  |  | was named Fin H5 |
| 29 | **Carrito de compra y checkout** |  |  | 5d → 5d? |  |  |
| 30 | Implementar carrito siempre visible (RQ1) |  | 2025-10-10 → 2025-10-09 (-1d) | 2d → 1d |  | was named CRUD fichas con tallas, colores y modelos |
| 31 | Permitir modificación de cantidades (RQ2) | 2025-10-13 → 2025-10-10 (-3d) | 2025-10-13 → 2025-10-10 (-3d) |  |  | was named Configurar atributos de producto |
| 32 | Implementar flujo de compra rápida ≤ 3 pasos (RQ4) | 2025-10-14 → 2025-10-13 (-1d) | 2025-10-14 → 2025-10-13 (-1d) |  |  | was named Gestión de stock |
| 33 | Conectar carrito con checkout (RQ14) | 2025-10-15 → 2025-10-14 (-1d) | 2025-10-15 → 2025-10-14 (-1d) |  |  | was named Gestión de productos agotados |
| 35 | Fin H6 – Flujo de compra validado |  |  |  |  | was named Fin H6 |
| 37 | Integrar pasarela de pago con SSL (RQ5) |  |  |  |  | was named CRUD fichas con tallas, colores y modelos |
| 38 | Validar seguridad HTTPS y cifrado |  |  |  |  | was named Configurar atributos de producto |
| 39 | Configurar opciones de pago (tarjeta, transferencia, etc.) |  |  |  |  | was named Gestión de stock |
| 40 | Prueba completa del flujo de pago |  |  |  |  | was named Gestión de productos agotados |
| 41 | Fin H7 – Pago y pasarela integrados |  |  |  |  | was named Fin H7 |
| 43 | Implementar panel de gestión de pedidos (RQ8) |  |  |  |  | was named CRUD fichas con tallas, colores y modelos |
| 44 | Permitir seguimiento con número de pedido (RQ8) |  |  |  |  | was named Configurar atributos de producto |
| 45 | Validar correos automáticos de confirmación (RQ16) |  |  |  |  | was named Gestión de stock |
| 46 | Revisar roles y accesos del administrador |  |  |  |  | was named Gestión de productos agotados |
| 47 | Fin H8 – Gestión de pedidos validada |  |  |  |  | was named Fin H8 |
| 50 | Integrar módulos principales (catálogo, carrito, pedidos, pago) |  |  |  |  | was named Definir el Plan de Gestión de Alcance |
| 51 | Validar funcionamiento conjunto |  |  |  |  | was named Definir el Plan de Gestión de Requisitos |
| 52 | Resolver conflictos o dependencias entre componentes |  |  |  |  | was named Definir el Plan de Gestión de Comunicaciones |
| 53 | Fin H9 – Integración completa |  |  |  |  | was named Fin H9 |
| 55 | Elaborar plan de pruebas funcionales (UAT) |  |  |  |  | was named Definir el Plan de Gestión de Alcance |
| 56 | Ejecutar pruebas con usuarios y recoger incidencias |  |  |  |  | was named Definir el Plan de Gestión de Requisitos |
| 57 | Corregir defectos y validar criterios de aceptación |  |  |  |  | was named Definir el Plan de Gestión de Comunicaciones |
| 58 | Fin H10 – Pruebas validadas por cliente |  |  |  |  | was named Fin H10 |
| 60 | Preparar entorno demo y productivo |  |  |  |  | was named Definir el Plan de Gestión de Alcance |
| 61 | Desplegar versión estable en PaaS (RQ19) |  |  |  |  | was named Definir el Plan de Gestión de Requisitos |
| 62 | Validar acceso y rendimiento del entorno |  |  |  |  | was named Definir el Plan de Gestión de Comunicaciones |
| 63 | Fin H11 – Despliegue final en PaaS |  |  |  |  | was named Fin H11 |
| 65 | Redactar manual de usuario |  |  |  |  | was named Definir el Plan de Gestión de Alcance |
| 66 | Redactar documentación técnica (instalación, mantenimiento) |  |  |  |  | was named Definir el Plan de Gestión de Requisitos |
| 67 | Validar documentación con el cliente (RQ20) |  |  |  |  | was named Definir el Plan de Gestión de Comunicaciones |
| 68 | Fin H12 – Documentación aprobada |  |  |  |  | was named Fin H12 |
| 71 | Reunión de cierre del proyecto |  |  |  |  | was named Definir el Plan de Gestión de Alcance |
| 72 | Recopilar lecciones aprendidas |  |  |  |  | was named Definir el Plan de Gestión de Requisitos |
| 73 | Actualizar repositorio final del proyecto |  |  |  |  | was named Definir el Plan de Gestión de Comunicaciones |
| 74 | Entregar documentación final firmada |  |  |  |  | was named Aprobar los Planes de Gestión |
| 75 | Fin H13 - Cierre del proyecto completado |  |  |  |  | was named Fin H13 |
